# 白名单数据源

Schedule from a web Gantt chart, 2025-12-01 to 2026-01-15.
Saturdays and Sundays are off

## Schedule

| ID | WBS | Task | Type | Duration | Start | Finish | Predecessors | Status |
| --- | --- | --- | --- | --- | --- | --- | --- | --- |
| 2 | 1 | 上线日 | fixed end | 1d | 2026-01-15 | 2026-01-15 |  |  |
| 3 | 2 | **业务** |  | 5d | 2025-12-01 | 2025-12-05 |  |  |
| 4 | 2.1 | 决策-前置小程序，数据字典、规则、指标等内容待明确补充需求 |  | 2d | 2025-12-01 | 2025-12-02 |  |  |
| 5 | 2.2 | ES-接口需求待完善 |  | 2d | 2025-12-02 | 2025-12-03 |  |  |
| 6 | 2.3 | 各系统（营销监测、ES、决策-前置小程序、决策-应用端）白名单需求完善明确 |  | 1d | 2025-12-04 | 2025-12-04 |  |  |
| 7 | 2.4 | 各系统（中台查ES）极优链路需求完善 |  | 1d | 2025-12-04 | 2025-12-04 |  |  |
| 8 | 2.5 | 各系统需求评估准出 |  | 2d | 2025-12-04 | 2025-12-05 |  |  |
| 9 | 3 | 孚嘉（外部评估开发时间） |  | 10d | 2025-12-02 | 2025-12-15 |  |  |
| 10 | 4 | **决策-前置小程序** |  | 22d | 2025-12-08 | 2026-01-06 |  |  |
| 11 | 4.1 | 开发 |  | 8d | 2025-12-08 | 2025-12-17 |  |  |
| 12 | 4.2 | 联调（与孚嘉） |  | 2d | 2025-12-18 | 2025-12-19 | 11 | waiting |
| 13 | 4.3 | 测试 |  | 12d | 2025-12-22 | 2026-01-06 | 12 | waiting |
| 14 | 5 | **营销监测** |  | 26d | 2025-12-08 | 2026-01-12 |  |  |
| 15 | 5.1 | 需求 |  | 1d | 2025-12-08 | 2025-12-08 |  |  |
| 16 | 5.2 | 设计 |  | 2d | 2025-12-09 | 2025-12-10 | 15 | waiting |
| 17 | 5.3 | 开发 |  | 14d | 2025-12-11 | 2025-12-30 | 16 | waiting |
| 18 | 5.4 | 造数，提供下游ES/决策/中台开发联调 |  | 1d | 2025-12-11 | 2025-12-11 |  |  |
| 19 | 5.5 | 确定表结构 |  | 1d | 2025-12-09 | 2025-12-09 |  |  |
| 20 | 5.6 | 联调（与决策-前置、ES、决策-应用） |  | 3d | 2025-12-31 | 2026-01-02 | 17 | waiting |
| 21 | 5.7 | 测试 |  | 6d | 2026-01-05 | 2026-01-12 | 20 | waiting |
| 22 | 6 | **ES（初步评估）** |  | 15d | 2025-12-01 | 2025-12-19 |  |  |
| 23 | 6.1 | 压测 |  | 3d | 2025-12-01 | 2025-12-03 |  |  |
| 24 | 6.2 | 开发 |  | 4d | 2025-12-10 | 2025-12-15 |  |  |
| 25 | 6.3 | 提供接口文档给决策、中台（依赖营销监测表结构t+2） |  | 2d | 2025-12-10 | 2025-12-11 | 19 | waiting |

| ID | WBS | Task | Duration | Start | Finish | Predecessors | Status |
| --- | --- | --- | --- | --- | --- | --- | --- |
| 26 | 7 | **决策-应用端** | 20d | 2025-12-12 | 2026-01-08 |  |  |
| 27 | 7.1 | 开发（依赖ES提供接口文档） | 10d | 2025-12-12 | 2025-12-25 | 25 | waiting |
| 28 | 7.2 | 开发（第一批功能交付） | 4d | 2025-12-12 | 2025-12-17 |  |  |
| 29 | 7.3 | 测试（按开发分批两次交付的形式压缩整体工期） | 16d | 2025-12-18 | 2026-01-08 | 28 | waiting |
| 30 | 8 | **渠道、中台-客户业务流程** | 11d | 2025-12-08 | 2025-12-22 |  |  |
| 31 | 8.1 | 需求 | 2d | 2025-12-08 | 2025-12-09 |  |  |
| 32 | 8.2 | 设计 | 1d | 2025-12-10 | 2025-12-10 |  |  |
| 33 | 8.3 | 开发 | 3d | 2025-12-11 | 2025-12-15 |  |  |
| 34 | 8.4 | 联调（与ES） | 2d | 2025-12-16 | 2025-12-17 |  |  |
| 35 | 8.5 | 交付测试（当前计划预估） | 1d | 2025-12-18 | 2025-12-18 |  |  |
| 36 | 8.6 | 测试【测试最晚能接受的交付日】 | 1d | 2025-12-22 | 2025-12-22 |  |  |
